# CapStnWBSBusAlerterv7

Schedule from MS Project, 2023-03-06 to 2023-04-21, A marks actual dates.

## Calendars

- Standard: Mon-Fri 08:00-12:00, 13:00-17:00; Sat-Sun off.

## Resources

| Resource |
| --- |
| Vernon Cox |

## Schedule

| ID | WBS | Task | Type | Duration | Start | Finish | Predecessors | Complete | Remaining | Baseline start | Baseline finish | Baseline duration | Total slack | Constraint | Resources | Work | Actual work |
| --- | --- | --- | --- | --- | --- | --- | --- | --- | --- | --- | --- | --- | --- | --- | --- | --- | --- |
| 1 | 01 | **IoT Projects for cohort #9** |  | 34.25d? | 2023-03-06 08:00 A | 2023-04-21 10:00 |  | 52% | 16.36d? | 2023-03-06 08:00 | 2023-04-04 17:00 | 22d? | 0d |  |  | 481.77h | 268.88h |
| 2 | 01.1 | **Midterm Project #1** |  | 3.44d | 2023-03-06 08:00 A | 2023-03-09 11:30 |  | 99% | 0d | 2023-03-06 08:00 | 2023-03-09 11:30 | 3.44d | 0d |  | Vernon Cox | 83h | 82.98h |
| 3 | 01.1.1 | **Plan the project** |  | 0.56d | 2023-03-06 08:00 A | 2023-03-06 13:30 A |  | 100% |  | 2023-03-06 08:00 | 2023-03-06 13:30 | 0.56d |  |  | Vernon Cox | 9h | 9h |
| 4 | 01.1.1.1 | write up the details |  | 4h | 2023-03-06 08:00 A | 2023-03-06 12:00 A |  | 100% |  | 2023-03-06 08:00 | 2023-03-06 12:00 | 4h |  |  | Vernon Cox | 4h | 4h |
| 5 | 01.1.1.2 | photo/video progress |  | 0.5h | 2023-03-06 13:00 A | 2023-03-06 13:30 A | 4 | 100% |  | 2023-03-06 13:00 | 2023-03-06 13:30 | 0.5h |  |  | Vernon Cox | 0.5h | 0.5h |
| 6 | 01.1.2 | **Draw the schematic** |  | 0.56d | 2023-03-06 13:30 A | 2023-03-07 09:00 A | 3 | 100% |  | 2023-03-06 13:30 | 2023-03-07 09:00 | 0.56d |  |  | Vernon Cox | 4.5h | 4.5h |
| 7 | 01.1.2.1 | pencil in the schematic in notebook or paper |  | 4h | 2023-03-06 13:30 A | 2023-03-07 08:30 A |  | 100% |  | 2023-03-06 13:30 | 2023-03-07 08:30 | 4h |  |  | Vernon Cox | 4h | 4h |
| 8 | 01.1.2.2 | photo/video progress |  | 0.5h | 2023-03-07 08:30 A | 2023-03-07 09:00 A | 7 | 100% |  | 2023-03-07 08:30 | 2023-03-07 09:00 | 0.5h |  |  | Vernon Cox | 0.5h | 0.5h |
| 9 | 01.1.3 | **set up new computer** |  | 0.38d | 2023-03-07 09:00 A | 2023-03-07 12:00 A | 3 | 100% |  | 2023-03-07 09:00 | 2023-03-07 12:00 | 0.38d |  |  | Vernon Cox | 3h | 3h |
| 10 | 01.1.3.1 | load software |  | 3h | 2023-03-07 09:00 A | 2023-03-07 12:00 A | 8 | 100% |  | 2023-03-07 09:00 | 2023-03-07 12:00 | 3h |  |  | Vernon Cox | 3h | 3h |
| 11 | 01.1.4 | **Fritz** |  | 0.12d | 2023-03-07 13:00 A | 2023-03-07 14:00 A |  | 100% |  | 2023-03-07 13:00 | 2023-03-07 14:00 | 0.12d |  |  | Vernon Cox | 2h | 2h |
| 12 | 01.1.4.1 | photo/video progress |  | 0.5h | 2023-03-07 13:00 A | 2023-03-07 13:30 A | 10 | 100% |  | 2023-03-07 13:00 | 2023-03-07 13:30 | 0.5h |  |  | Vernon Cox | 0.5h | 0.5h |
| 13 | 01.1.4.2 | draw wiring using Fritz |  | 0.5h | 2023-03-07 13:30 A | 2023-03-07 14:00 A | 12 | 100% |  | 2023-03-07 13:30 | 2023-03-07 14:00 | 0.5h |  |  | Vernon Cox | 0.5h | 0.5h |
| 14 | 01.1.5 | **Code** |  | 2.31d | 2023-03-07 09:00 A | 2023-03-09 11:30 A | 3 | 100% |  | 2023-03-07 09:00 | 2023-03-09 11:30 | 2.31d |  |  | Vernon Cox | 14h | 14h |
| 15 | 01.1.5.1 | photo/video progress |  | 0.5h | 2023-03-07 14:00 A | 2023-03-07 14:30 A | 13 | 100% |  | 2023-03-07 14:00 | 2023-03-07 14:30 | 0.5h |  |  | Vernon Cox | 0.5h | 0.5h |
| 16 | 01.1.5.2 | find code for (new and old) units |  | 2h | 2023-03-07 09:00 A | 2023-03-08 11:00 A |  | 100% |  | 2023-03-07 09:00 | 2023-03-08 11:00 | 2h |  |  | Vernon Cox | 2h | 2h |
| 17 | 01.1.5.3 | Auto and Manual - user controls lights and outlet |  | 1h | 2023-03-09 10:30 A | 2023-03-09 11:30 A | 16 | 100% |  | 2023-03-09 10:30 | 2023-03-09 11:30 | 1h |  |  | Vernon Cox | 1h | 1h |
| 18 | 01.1.5.4 | modify code for my use |  | 1h | 2023-03-07 09:30 A | 2023-03-07 10:30 A | 15 | 100% |  | 2023-03-07 09:30 | 2023-03-07 10:30 | 1h |  |  | Vernon Cox | 1h | 1h |
| 19 | 01.1.5.5 | control 2 WEMO outlets |  | 1h | 2023-03-08 08:00 A | 2023-03-08 09:00 A | 16 | 100% |  | 2023-03-08 08:00 | 2023-03-08 09:00 | 1h |  |  | Vernon Cox | 1h | 1h |
| 20 | 01.1.5.6 | update code to control 2 WEMO outlets |  | 1h | 2023-03-08 08:00 A | 2023-03-08 09:00 A | 19 | 100% |  | 2023-03-08 08:00 | 2023-03-08 09:00 | 1h |  |  | Vernon Cox | 1h | 1h |
| 21 | 01.1.5.7 | control Hue lights |  | 1h | 2023-03-08 08:00 A | 2023-03-08 09:00 A | 20 | 100% |  | 2023-03-08 08:00 | 2023-03-08 09:00 | 1h |  |  | Vernon Cox | 1h | 1h |
| 22 | 01.1.5.8 | update codefor hue lights |  | 1h | 2023-03-08 08:00 A | 2023-03-08 09:15 A | 21 | 100% |  | 2023-03-08 08:00 | 2023-03-08 09:15 | 1h |  |  | Vernon Cox | 1h | 1h |
| 23 | 01.1.6 | **build the Welcome Box** |  | 2.56d | 2023-03-06 13:30 A | 2023-03-09 09:00 A | 3 | 100% |  | 2023-03-06 13:30 | 2023-03-09 09:00 | 2.56d |  |  | Vernon Cox | 23h | 23h |
| 24 | 01.1.6.1 | 3D design and print at least one part (button cover, knob, logo, etc.) |  | 1h | 2023-03-09 08:00 A | 2023-03-09 09:00 A | 22 | 100% |  | 2023-03-09 08:00 | 2023-03-09 09:00 | 1h |  | start no earlier than 2023-03-09 08:00 | Vernon Cox | 1h | 1h |
| 25 | 01.1.6.2 | A component made at FUSE - laser, wood, metal (case, stand, etc.) |  | 1h | 2023-03-09 08:00 A | 2023-03-09 09:00 A |  | 100% |  | 2023-03-09 08:00 | 2023-03-09 09:00 | 1h |  | start no earlier than 2023-03-09 08:00 | Vernon Cox | 1h | 1h |
| 26 | 01.1.6.3 | photo/video progress |  | 0.5h | 2023-03-06 13:30 A | 2023-03-06 14:00 A |  | 100% |  | 2023-03-06 13:30 | 2023-03-06 14:00 | 0.5h |  |  | Vernon Cox | 0.5h | 0.5h |
| 27 | 01.9 | complete first midterm | milestone | 1min | 2023-03-06 14:00 | 2023-03-06 14:01 | 26 |  |  | 2023-03-06 14:00 | 2023-03-06 14:01 | 1min | 34.37d |  |  |  |  |

| ID | WBS | Task | Type | Duration | Start | Finish | Predecessors | Complete | Remaining | Baseline start | Baseline finish | Baseline duration | Total slack | Free slack | Constraint | Resources | Work | Actual work |
| --- | --- | --- | --- | --- | --- | --- | --- | --- | --- | --- | --- | --- | --- | --- | --- | --- | --- | --- |
| 28 | 01.2 | **Midterm #2v1** |  | 2.38d | 2023-03-17 08:00 A | 2023-03-21 11:00 A | 26 | 100% |  | 2023-03-17 08:00 | 2023-03-21 11:00 | 2.38d |  |  | start no earlier than 2023-03-17 08:00 | Vernon Cox | 61.5h | 61.5h |
| 29 | 01.2.1 | **Plan the project** |  | 0.5d | 2023-03-17 08:00 A | 2023-03-17 12:00 A |  | 100% |  | 2023-03-17 08:00 | 2023-03-17 12:00 | 0.5d |  |  |  | Vernon Cox | 8.5h | 8.5h |
| 30 | 01.2.1.1 | write up the details |  | 4h | 2023-03-17 08:00 A | 2023-03-17 12:00 A |  | 100% |  | 2023-03-17 08:00 | 2023-03-17 12:00 | 4h |  |  | start no earlier than 2023-03-17 08:00 | Vernon Cox | 4h | 4h |
| 31 | 01.2.1.2 | photo/video progress |  | 0.5h | 2023-03-17 08:00 A | 2023-03-17 08:30 A |  | 100% |  | 2023-03-17 08:00 | 2023-03-17 08:30 | 0.5h |  |  |  | Vernon Cox | 0.5h | 0.5h |
| 32 | 01.2.2 | **Fritz** |  | 0.12d | 2023-03-17 08:00 A | 2023-03-17 09:00 A |  | 100% |  | 2023-03-17 08:00 | 2023-03-17 09:00 | 0.12d |  |  |  | Vernon Cox | 3h | 3h |
| 33 | 01.2.2.1 | photo/video progress |  | 1h | 2023-03-17 08:00 A | 2023-03-17 09:00 A |  | 100% |  | 2023-03-17 08:00 | 2023-03-17 09:00 | 1h |  |  |  | Vernon Cox | 1h | 1h |
| 34 | 01.2.2.2 | draw wiring using Fritz |  | 1h | 2023-03-17 08:00 A | 2023-03-17 09:00 A |  | 100% |  | 2023-03-17 08:00 | 2023-03-17 09:00 | 1h |  |  |  | Vernon Cox | 1h | 1h |
| 35 | 01.2.3 | **Code** |  | 0.5d | 2023-03-17 13:00 A | 2023-03-17 17:00 A | 29 | 100% |  | 2023-03-17 13:00 | 2023-03-17 17:00 | 0.5d |  |  |  | Vernon Cox | 20h | 20h |
| 36 | 01.2.3.1 | photo/video progress |  | 0.5h | 2023-03-17 13:00 A | 2023-03-17 13:30 A |  | 100% |  | 2023-03-17 13:00 | 2023-03-17 13:30 | 0.5h |  |  |  | Vernon Cox | 0.5h | 0.5h |
| 37 | 01.2.3.2 | find code for (new and old) units |  | 2h | 2023-03-17 13:00 A | 2023-03-17 15:00 A |  | 100% |  | 2023-03-17 13:00 | 2023-03-17 15:00 | 2h |  |  |  | Vernon Cox | 2h | 2h |
| 38 | 01.2.3.3 | Integrate the entire system |  | 1h | 2023-03-17 13:00 A | 2023-03-17 14:00 A |  | 100% |  | 2023-03-17 13:00 | 2023-03-17 14:00 | 1h |  |  |  | Vernon Cox | 1h | 1h |
| 39 | 01.2.3.4 | Create a user friendly Adafruit.io dashboard |  | 1h | 2023-03-17 13:00 A | 2023-03-17 14:00 A |  | 100% |  | 2023-03-17 13:00 | 2023-03-17 14:00 | 1h |  |  |  | Vernon Cox | 1h | 1h |
| 40 | 01.2.3.5 | Buy and/or create a structure to hold the plant, pump, and sensors. |  | 0.5h | 2023-03-17 13:00 A | 2023-03-17 13:30 A |  | 100% |  | 2023-03-17 13:00 | 2023-03-17 13:30 | 0.5h |  |  |  | Vernon Cox | 0.5h | 0.5h |
| 41 | 01.2.3.6 | Integration of SMS/email messaging using Zapier (following slides). |  | 4h | 2023-03-17 13:00 A | 2023-03-17 17:00 A |  | 100% |  | 2023-03-17 13:00 | 2023-03-17 17:00 | 4h |  |  |  | Vernon Cox | 4h | 4h |
| 42 | 01.2.3.7 | Video demo your Plant Watering System |  | 3h | 2023-03-17 13:00 A | 2023-03-17 16:00 A |  | 100% |  | 2023-03-17 13:00 | 2023-03-17 16:00 | 3h |  |  |  | Vernon Cox | 3h | 3h |
| 43 | 01.2.3.8 | update code for watering system |  | 4h | 2023-03-17 13:00 A | 2023-03-17 17:00 A |  | 100% |  | 2023-03-17 13:00 | 2023-03-17 17:00 | 4h |  |  |  | Vernon Cox | 4h | 4h |
| 44 | 01.2.4 | **build the Fijian Plant H2O system** |  | 0.38d | 2023-03-21 08:00 A | 2023-03-21 11:00 A | 43 | 100% |  | 2023-03-21 08:00 | 2023-03-21 11:00 | 0.38d |  |  | start no earlier than 2023-03-21 08:00 | Vernon Cox | 11h | 11h |
| 45 | 01.2.4.1 | place all components in bowl |  | 2h | 2023-03-21 08:00 A | 2023-03-21 10:00 A |  | 100% |  | 2023-03-21 08:00 | 2023-03-21 10:00 | 2h |  |  |  | Vernon Cox | 2h | 2h |
| 46 | 01.2.4.2 | check for plant system operation within bowl |  | 3h | 2023-03-21 08:00 A | 2023-03-21 11:00 A |  | 100% |  | 2023-03-21 08:00 | 2023-03-21 11:00 | 3h |  |  |  | Vernon Cox | 3h | 3h |
| 47 | 01.2.4.3 | photo/video progress |  | 3h | 2023-03-21 08:00 A | 2023-03-21 11:00 A |  | 100% |  | 2023-03-21 08:00 | 2023-03-21 11:00 | 3h |  |  |  | Vernon Cox | 3h | 3h |
| 48 | 01.8 | complete second midterm | milestone | 1min | 2023-03-21 11:00 A | 2023-03-21 11:01 A | 44 | 100% |  | 2023-03-21 11:00 | 2023-03-21 11:01 | 1min |  |  |  | Vernon Cox | 0.02h | 0.02h |
| 49 | 01.3 | Capstone project ramp-up |  | 9d? | 2023-03-22 08:00 | 2023-04-03 17:00 | 48 |  |  | 2023-03-22 08:00 | 2023-04-03 17:00 | 9d? | 4.11d | 0d | finish no earlier than 2023-04-03 17:00 | Vernon Cox | 72h |  |
| 51 | 01.4 | **CAPSTONE Project** |  | 13.25d | 2023-04-04 08:00 A | 2023-04-21 10:00 | 49, 2 | 59% | 5.45d | 2023-04-04 08:00 | 2023-04-04 17:00 | 1d | 0d |  |  | Vernon Cox | 265.26h | 124.38h |
| 52 | 01.4.1 | Plan the BusAlerter project |  | 48h | 2023-04-04 08:00 A | 2023-04-11 17:00 |  | 25% | 36h | 2023-04-04 08:00 | 2023-04-04 15:00 | 6h | 7.25d |  | start no earlier than 2023-04-04 08:00 | Vernon Cox | 48h | 12h |
| 53 | 1.6.2 | develop work breakdown schedule |  | 3h | 2023-04-05 08:00 A | 2023-04-10 17:00 A |  | 100% |  |  |  |  |  |  | finish no earlier than 2023-04-10 17:00 | Vernon Cox | 3h | 3h |
| 54 | 01.4.2 | write up the details/begin the visio |  | 48h | 2023-04-04 08:00 A | 2023-04-11 17:00 |  | 25% | 36h | 2023-04-04 08:00 | 2023-04-04 12:00 | 4h | 7.25d |  | finish no earlier than 2023-04-11 17:00 | Vernon Cox | 48h | 12h |
| 55 | 01.4.3 | photo/video progress |  | 0.5d | 2023-04-12 08:00 A | 2023-04-12 12:00 A | 54 | 100% |  | 2023-04-04 08:00 | 2023-04-04 12:00 | 0.5d |  |  |  | Vernon Cox | 4h | 4h |
| 56 | 01.4.4 | visio the thought |  | 2d | 2023-04-12 08:00 A | 2023-04-13 17:00 A | 52 | 100% |  | 2023-04-04 15:00 | 2023-04-04 17:00 | 0.25d |  |  |  | Vernon Cox | 16h | 16h |
| 57 | 01.4.16 | check for maker-space availabiltiy to make holding box |  | 2h | 2023-04-10 08:00 A | 2023-04-10 10:00 A |  | 100% |  |  |  |  |  |  | start no earlier than 2023-04-10 08:00 | Vernon Cox | 2h | 2h |

| ID | WBS | Task | Duration | Start | Finish | Predecessors | Complete | Baseline start | Baseline finish | Baseline duration | Constraint | Resources | Work | Actual work |
| --- | --- | --- | --- | --- | --- | --- | --- | --- | --- | --- | --- | --- | --- | --- |
| 58 | 01.4.8 | **modify code** | 4.76d | 2023-04-10 15:00 A | 2023-04-17 13:06 A |  | 100% | 2023-04-04 15:00 | 2023-04-04 17:00 | 2h |  | Vernon Cox | 55.6h | 55.6h |
| 59 | 01.4.8.4 | develop the process that post the GPU location of LoRaB unit | 14h | 2023-04-11 08:00 A | 2023-04-12 15:00 A |  | 100% |  |  |  | start no earlier than 2023-04-07 08:00 | Vernon Cox | 14h | 14h |
| 60 | 1.6.7.2 | develop the process that gets the GPU location of LoRaB unit by the LoRaH unit | 20h | 2023-04-12 15:00 A | 2023-04-17 10:00 A | 59 | 100% |  |  |  |  |  |  |  |
| 61 | 01.4.8.8 | test this iteration | 3h | 2023-04-10 15:00 A | 2023-04-17 13:06 A | 60 | 100% |  |  |  |  | Vernon Cox | 3h | 3h |
| 62 | 01.4.8.10 | review progress by Brian and/or EJ | 0.5h | 2023-04-13 11:00 A | 2023-04-13 11:30 A |  | 100% |  |  |  |  | Vernon Cox | 0.5h | 0.5h |
| 63 | 01.4.15 | update work breakdown schedule | 2h | 2023-04-13 11:30 A | 2023-04-13 14:30 A | 62 | 100% |  |  |  |  | Vernon Cox | 2h | 2h |
| 64 | 01.4.9 | fritz | 2h | 2023-04-12 08:00 A | 2023-04-12 10:00 A | 52 | 100% | 2023-04-04 15:00 | 2023-04-04 17:00 | 2h |  | Vernon Cox | 2h | 2h |
| 65 | 01.4.11 | photo/video progress | 1h | 2023-04-12 10:00 A | 2023-04-12 11:00 A | 64 | 100% |  |  |  |  | Vernon Cox | 1h | 1h |
| 66 | 01.4.10 | make a box to hold electronics | 4h | 2023-04-14 08:00 A | 2023-04-14 12:00 A |  | 100% |  |  |  | start no earlier than 2023-04-14 08:00 | Vernon Cox | 4h | 4h |
| 67 | 01.4.12 | photo/video progress | 1h | 2023-04-14 13:00 A | 2023-04-14 14:00 A | 66 | 100% |  |  |  |  | Vernon Cox | 1h | 1h |
| 68 | 01.4.13 | review progress by Brian and/or EJ | 0.5h | 2023-04-14 14:00 A | 2023-04-14 14:30 A | 67 | 100% |  |  |  |  | Vernon Cox | 0.5h | 0.5h |
| 69 | 01.4.14 | test this iteration | 2h | 2023-04-14 14:30 A | 2023-04-14 16:30 A | 68 | 100% |  |  |  |  | Vernon Cox | 2h | 2h |
| 70 | 01.4.17 | update work breakdown schedule | 2h | 2023-04-14 16:30 A | 2023-04-17 09:30 A | 69 | 100% |  |  |  |  | Vernon Cox | 2h | 2h |
| 71 | 01.4.18 | **complete capstone** | 0.12d | 2023-04-21 08:00 A | 2023-04-21 09:00 A |  | 100% |  |  |  |  | Vernon Cox | 2h | 2h |
| 72 | 01.4.18.2 | present project to instructors, employers, guest | 1h | 2023-04-21 08:00 A | 2023-04-21 09:00 A |  | 100% |  |  |  | start no earlier than 2023-04-21 08:00 | Vernon Cox | 1h | 1h |
| 73 | 01.4.19 | **complete IoT and Rapid Prototyping course** | 0.12d | 2023-04-21 09:00 A | 2023-04-21 10:00 A | 72 | 100% |  |  |  |  | Vernon Cox | 2h | 2h |
| 74 | 01.4.19.1 | receive certificate | 1h | 2023-04-21 09:00 A | 2023-04-21 10:00 A |  | 100% |  |  |  |  | Vernon Cox | 1h | 1h |
